# 铸环车间-熔炼

Schedule from MS Project, 2017-12-04 to 2018-01-15.

## Calendars

- 标准: Mon-Fri 08:00-12:00, 13:00-17:00; Sat-Sun off. Exceptions (off unless hours are given): 2018-01-01 (元旦公休假).

## Schedule

| ID | WBS | Task | Duration | Start | Finish | Predecessors | Total slack | Free slack |
| --- | --- | --- | --- | --- | --- | --- | --- | --- |
| 1 | 1 | **双环MESIII期** | 30d | 2017-12-04 | 2018-01-15 |  | 0d |  |
| 2 | 1.1 | **铸环车间** | 30d | 2017-12-04 | 2018-01-15 |  | 0d |  |
| 3 | 1.1.1 | **熔炼** | 30d | 2017-12-04 | 2018-01-15 |  | 0d |  |
| 4 | 1.1.1.1 | **主数据维护** | 10d | 2017-12-04 | 2017-12-15 |  | 0d |  |
| 5 | 1.1.1.1.1 | 材质主数据维护 | 1.5d | 2017-12-04 | 2017-12-05 |  | 0d |  |
| 6 | 1.1.1.1.2 | 材质BOM表数据维护 | 1.5d | 2017-12-05 | 2017-12-06 | 5 | 0d |  |
| 7 | 1.1.1.1.3 | 型板号（工装）主数据维护 | 1.5d | 2017-12-07 | 2017-12-08 | 6 | 0d |  |
| 8 | 1.1.1.1.4 | 排产数据导入模板文件设计 | 1d | 2017-12-04 | 2017-12-04 |  | 4d | 0d |
| 9 | 1.1.1.1.5 | 《铸造产品标示卡》打印模板设计 | 1d | 2017-12-05 | 2017-12-05 | 8 | 4d | 0d |
| 10 | 1.1.1.1.6 | 数据导入机制平台化迁移 | 3d | 2017-12-08 | 2017-12-13 | 7 | 0d |  |
| 11 | 1.1.1.1.7 | 建立工序、工位和设备产线的关联关系 | 1d | 2017-12-13 | 2017-12-14 | 10 | 0d |  |
| 12 | 1.1.1.1.8 | 产线资源矩阵维护 | 1.5d | 2017-12-14 | 2017-12-15 | 11 | 0d |  |
| 13 | 1.1.1.2 | **界面设计** | 4d | 2017-12-06 | 2017-12-11 |  | 4d |  |
| 14 | 1.1.1.2.1 | 配料界面设计 | 1d | 2017-12-06 | 2017-12-06 | 9 | 4d | 0d |
| 15 | 1.1.1.2.2 | 熔炼生产界面设计 | 2d | 2017-12-07 | 2017-12-08 | 14 | 4d | 0d |
| 16 | 1.1.1.2.3 | 理化检验界面设计 | 1d | 2017-12-11 | 2017-12-11 | 15 | 4d |  |
| 17 | 1.1.1.3 | 数据库接口设计 | 1d | 2017-12-18 | 2017-12-18 | 4, 13 | 0d |  |
| 18 | 1.1.1.4 | **开发** | 15d | 2017-12-19 | 2018-01-09 | 13, 17 | 0d |  |
| 19 | 1.1.1.4.1 | **界面开发** | 15d | 2017-12-19 | 2018-01-09 |  | 0d |  |
| 20 | 1.1.1.4.1.1 | 配料界面开发 | 4d | 2017-12-19 | 2017-12-22 |  | 0d |  |
| 21 | 1.1.1.4.1.2 | 熔炼生产界面开发 | 7d | 2017-12-25 | 2018-01-03 | 20 | 0d |  |
| 22 | 1.1.1.4.1.3 | 理化检验界面开发 | 4d | 2018-01-04 | 2018-01-09 | 21 | 0d |  |
| 23 | 1.1.1.4.2 | 数据库开发 | 10d | 2017-12-19 | 2018-01-02 |  | 5d |  |
| 24 | 1.1.1.5 | 测试 | 2d | 2018-01-10 | 2018-01-11 | 18 | 0d |  |
| 25 | 1.1.1.6 | 部署 | 1d | 2018-01-12 | 2018-01-12 | 24 | 0d |  |
| 26 | 1.1.1.7 | 培训 | 1d | 2018-01-15 | 2018-01-15 | 25 | 0d |  |
